# assignment1

Schedule from MS Project, 2023-03-01 to 2023-06-15, costs in $.

## Calendars

- Standard: Mon-Fri 08:00-12:00, 13:00-17:00; Sat-Sun off. Exceptions (off unless hours are given): 2023-04-07 (Good Friday), 2023-04-10 (Easter Monday), 2023-04-25 (ANZAC Day), 2023-06-05 (King's Birthday).

## Resources

| Resource | Rate |
| --- | --- |
| Project Manager | 500 |
| Analyst | 200 |
| Developer | 250 |
| Tester | 250 |
| Trainer | 200 |
| Technical Communicator | 200 |
| Deployment Team | 500 |

## Schedule

| ID | WBS | Task | Type | Duration | Start | Finish | Predecessors | Baseline start | Baseline finish | Baseline duration | Total slack | Free slack | Resources | Work | Cost | Baseline cost |
| --- | --- | --- | --- | --- | --- | --- | --- | --- | --- | --- | --- | --- | --- | --- | --- | --- |
| 1 | 1 | **Software Development** |  | 73d | 2023-03-01 | 2023-06-15 |  | 2023-03-01 | 2023-06-15 | 73d | -5d | 0d |  | 1112h | 290,000 | 290,000 |
| 2 | 1.1 | **Scope** |  | 2d | 2023-03-01 | 2023-03-02 |  | 2023-03-01 | 2023-03-02 | 2d | -5d | 0d |  | 16h | 8,000 | 8,000 |
| 3 | 1.1.1 | Define preliminary resources |  | 1d | 2023-03-01 | 2023-03-01 |  | 2023-03-01 | 2023-03-01 | 1d | -5d | 0d | Project Manager | 8h | 4,000 | 4,000 |
| 4 | 1.1.2 | Secure core resources |  | 1d | 2023-03-02 | 2023-03-02 | 3 | 2023-03-02 | 2023-03-02 | 1d | -5d | 0d | Project Manager | 8h | 4,000 | 4,000 |
| 5 | 1.2 | **Analysis/Software Requirements** |  | 11d | 2023-03-03 | 2023-03-17 |  | 2023-03-03 | 2023-03-17 | 11d | -5d | 0d |  | 88h | 24,800 | 24,800 |
| 6 | 1.2.1 | Conduct needs analysis & draft prelim. Specs. |  | 8d | 2023-03-03 | 2023-03-14 | 4 | 2023-03-03 | 2023-03-14 | 8d | -5d | 0d | Analyst | 64h | 12,800 | 12,800 |
| 7 | 1.2.2 | Develop preliminary budget & timeline |  | 3d | 2023-03-15 | 2023-03-17 | 6 | 2023-03-15 | 2023-03-17 | 3d | -5d | 0d | Project Manager | 24h | 12,000 | 12,000 |
| 8 | 1.3 | **Design** |  | 9d | 2023-03-27 | 2023-04-06 |  | 2023-03-27 | 2023-04-06 | 9d | -10d | 0d |  | 72h | 21,600 | 21,600 |
| 9 | 1.3.1 | Review preliminary software specifications |  | 2d | 2023-03-27 | 2023-03-28 | 7 | 2023-03-27 | 2023-03-28 | 2d | -10d | 0d | Analyst | 16h | 3,200 | 3,200 |
| 10 | 1.3.2 | Develop prototype |  | 4d | 2023-03-29 | 2023-04-03 | 9 | 2023-03-29 | 2023-04-03 | 4d | -10d | 0d | Analyst | 32h | 6,400 | 6,400 |
| 11 | 1.3.3 | Incorporate prototype feedback |  | 3d | 2023-04-04 | 2023-04-06 | 10 | 2023-04-04 | 2023-04-06 | 3d | -5d | 0d | Project Manager | 24h | 12,000 | 12,000 |
| 12 | 1.4 | Design Complete | milestone | 0d | 2023-04-06 | 2023-04-06 | 11 | 2023-04-06 | 2023-04-06 | 0d | 46d |  |  |  |  |  |
| 13 | 1.5 | **Development** |  | 28d | 2023-04-11 | 2023-05-19 | 8 | 2023-04-11 | 2023-05-19 | 28d | -5d | 0d |  | 224h | 56,000 | 56,000 |
| 14 | 1.5.1 | Review functional specifications |  | 1d | 2023-04-11 | 2023-04-11 |  | 2023-04-11 | 2023-04-11 | 1d | -5d | 0d | Developer | 8h | 2,000 | 2,000 |
| 15 | 1.5.2 | Identify modular/tiered design parameters |  | 1d | 2023-04-12 | 2023-04-12 | 14 | 2023-04-12 | 2023-04-12 | 1d | -5d | 0d | Developer | 8h | 2,000 | 2,000 |
| 16 | 1.5.3 | Assign development staff |  | 1d | 2023-04-13 | 2023-04-13 | 15 | 2023-04-13 | 2023-04-13 | 1d | -5d | 0d | Developer | 8h | 2,000 | 2,000 |
| 17 | 1.5.4 | Develop code |  | 25d | 2023-04-14 | 2023-05-19 | 16 | 2023-04-14 | 2023-05-19 | 25d | -5d | 0d | Developer | 200h | 50,000 | 50,000 |
| 18 | 1.6 | **Testing** |  | 27d | 2023-04-21 | 2023-05-30 |  | 2023-04-21 | 2023-05-30 | 27d | -5d | 0d |  | 216h | 54,000 | 54,000 |
| 19 | 1.6.1 | **Unit Testing** |  | 15d | 2023-04-21 | 2023-05-12 | 17SS+5d | 2023-04-21 | 2023-05-12 | 15d | -5d | 0d |  | 120h | 30,000 | 30,000 |
| 20 | 1.6.1.1 | Review modular code |  | 5d | 2023-04-21 | 2023-04-28 |  | 2023-04-21 | 2023-04-28 | 5d | -5d | 0d | Tester | 40h | 10,000 | 10,000 |
| 21 | 1.6.1.2 | Test component modules to specifications |  | 2d | 2023-05-01 | 2023-05-02 | 20 | 2023-05-01 | 2023-05-02 | 2d | -5d | 0d | Tester | 16h | 4,000 | 4,000 |
| 22 | 1.6.1.3 | Identify anomalies to specifications |  | 3d | 2023-05-03 | 2023-05-05 | 21 | 2023-05-03 | 2023-05-05 | 3d | -5d | 0d | Tester | 24h | 6,000 | 6,000 |
| 23 | 1.6.1.4 | Modify code and re-test |  | 5d | 2023-05-08 | 2023-05-12 | 22 | 2023-05-08 | 2023-05-12 | 5d | -5d | 0d | Tester | 40h | 10,000 | 10,000 |
| 24 | 1.6.2 | **Integration Testing** |  | 12d | 2023-05-15 | 2023-05-30 | 19 | 2023-05-15 | 2023-05-30 | 12d | -5d | 0d |  | 96h | 24,000 | 24,000 |
| 25 | 1.6.2.1 | Test module integration |  | 5d | 2023-05-15 | 2023-05-19 |  | 2023-05-15 | 2023-05-19 | 5d | -5d | 0d | Tester | 40h | 10,000 | 10,000 |
| 26 | 1.6.2.2 | Identify anomalies to specifications |  | 2d | 2023-05-22 | 2023-05-23 | 25 | 2023-05-22 | 2023-05-23 | 2d | -5d | 0d | Tester | 16h | 4,000 | 4,000 |
| 27 | 1.6.2.3 | Modify code and re-test |  | 5d | 2023-05-24 | 2023-05-30 | 26 | 2023-05-24 | 2023-05-30 | 5d | -5d | 0d | Tester | 40h | 10,000 | 10,000 |

| ID | WBS | Task | Type | Duration | Start | Finish | Predecessors | Baseline start | Baseline finish | Baseline duration | Total slack | Free slack | Deadline | Resources | Work | Cost | Baseline cost |
| --- | --- | --- | --- | --- | --- | --- | --- | --- | --- | --- | --- | --- | --- | --- | --- | --- | --- |
| 28 | 1.7 | **Training** |  | 17d | 2023-04-11 | 2023-05-04 | 13SS | 2023-04-11 | 2023-05-04 | 17d | 24d |  |  |  | 136h | 27,200 | 27,200 |
| 29 | 1.7.1 | Identify training delivery methodology |  | 2d | 2023-04-11 | 2023-04-12 |  | 2023-04-11 | 2023-04-12 | 2d | 24d | 0d |  | Trainer | 16h | 3,200 | 3,200 |
| 30 | 1.7.2 | Develop training materials |  | 15d | 2023-04-13 | 2023-05-04 | 29 | 2023-04-13 | 2023-05-04 | 15d | 24d |  |  | Trainer | 120h | 24,000 | 24,000 |
| 31 | 1.8 | **Documentation** |  | 18d | 2023-04-21 | 2023-05-17 | 17SS+5d | 2023-04-21 | 2023-05-17 | 18d | 15d |  |  |  | 272h | 54,400 | 54,400 |
| 32 | 1.8.1 | Develop Help system |  | 16d | 2023-04-21 | 2023-05-15 |  | 2023-04-21 | 2023-05-15 | 16d | 15d | 0d |  | Technical Communicator | 128h | 25,600 | 25,600 |
| 33 | 1.8.2 | Develop user manuals |  | 16d | 2023-04-21 | 2023-05-15 | 32SS | 2023-04-21 | 2023-05-15 | 16d | 15d | 0d |  | Technical Communicator | 128h | 25,600 | 25,600 |
| 34 | 1.8.3 | Incorporate user documentation feedback |  | 2d | 2023-05-16 | 2023-05-17 | 33, 32 | 2023-05-16 | 2023-05-17 | 2d | 15d |  |  | Technical Communicator | 16h | 3,200 | 3,200 |
| 35 | 1.9 | **Pilot** |  | 7d | 2023-05-31 | 2023-06-09 | 18 | 2023-05-31 | 2023-06-09 | 7d | -5d | 0d |  |  | 56h | 28,000 | 28,000 |
| 36 | 1.9.1 | Develop software delivery mechanism |  | 1d | 2023-05-31 | 2023-05-31 |  | 2023-05-31 | 2023-05-31 | 1d | -5d | 0d |  | Deployment Team | 8h | 4,000 | 4,000 |
| 37 | 1.9.2 | Install/deploy software |  | 1d | 2023-06-01 | 2023-06-01 | 36 | 2023-06-01 | 2023-06-01 | 1d | -5d | 0d |  | Deployment Team | 8h | 4,000 | 4,000 |
| 38 | 1.9.3 | Obtain user feedback |  | 5d | 2023-06-02 | 2023-06-09 | 37 | 2023-06-02 | 2023-06-09 | 5d | -5d | 0d |  | Deployment Team | 40h | 20,000 | 20,000 |
| 39 | 1.10 | **Deployment** |  | 4d | 2023-06-12 | 2023-06-15 |  | 2023-06-12 | 2023-06-15 | 4d | -5d | 0d |  |  | 32h | 16,000 | 16,000 |
| 40 | 1.10.1 | Determine final deployment strategy & methodology |  | 2d | 2023-06-12 | 2023-06-13 | 38 | 2023-06-12 | 2023-06-13 | 2d | -5d | 0d |  | Deployment Team | 16h | 8,000 | 8,000 |
| 41 | 1.10.2 | Train support staff |  | 1d | 2023-06-14 | 2023-06-14 | 40 | 2023-06-14 | 2023-06-14 | 1d | -5d | 0d |  | Deployment Team | 8h | 4,000 | 4,000 |
| 42 | 1.10.3 | Deploy software |  | 1d | 2023-06-15 | 2023-06-15 | 41 | 2023-06-15 | 2023-06-15 | 1d | -5d | 0d |  | Deployment Team | 8h | 4,000 | 4,000 |
| 43 | 1.11 | Project Complete | milestone | 0d | 2023-06-15 | 2023-06-15 | 2, 5, 8, 13, 18, 31, 35, 39, 28 | 2023-06-15 | 2023-06-15 | 0d | -5d | 0d | 2023-06-08 |  |  |  |  |
